# caMOD 2.2

Schedule from MS Project, 2007-09-28 to 2008-03-10.
SAIC

## Calendars

- Standard: Mon-Fri 08:00-12:00, 13:00-17:00; Sat-Sun off.

## Resources

| Resource |
| --- |
| GuruswamiS |
| NCICB |
| Anand |
| Ulli |
| QA |
| Sima |
| DBA |
| 2nd Resource |
| Sima |
| Srini |
| Grid Resource |
| App Support |
| Systems |
| Jill |

## Schedule

| ID | WBS | Task | Type | Duration | Start | Finish | Predecessors | Total slack | Free slack | Resources | Work |
| --- | --- | --- | --- | --- | --- | --- | --- | --- | --- | --- | --- |
| 1 | 1 | **caMOD 2.4 Release** |  | 117d | 2007-09-28 | 2008-03-10 |  | 0d |  |  | 1696h |
| 2 | 1.1 | **Inception Phase** |  | 16d | 2007-09-28 | 2007-10-19 |  | 0d |  |  | 48h |
| 3 | 1.1.1 | Use Case and Design Doc (caBIG template) |  | 2w | 2007-09-28 | 2007-10-11 |  | 0d |  | Sima [50%] | 40h |
| 4 | 1.1.2 | Review use cases / design with the "Review Board" |  | 6d | 2007-10-12 | 2007-10-19 | 3 | 0d |  | Sima | 8h |
| 5 | 1.2 | Milestone: Completed Design document | milestone | 0d | 2007-10-19 | 2007-10-19 | 4 | 0d |  | Anand |  |
| 6 | 1.3 | **Elaboration Phase** |  | 22d | 2007-10-22 | 2007-11-20 |  | 0d |  |  | 176h |
| 7 | 1.3.1 | Incorporate changes to the Object Model |  | 3d | 2007-10-22 | 2007-10-24 | 5 | 0d |  | Ulli | 24h |
| 8 | 1.3.2 | Make code changes due to Object Model changes |  | 5d | 2007-10-25 | 2007-10-31 | 7 | 0d |  | Sima | 40h |
| 9 | 1.3.3 | Milestone: Soft Freeze Object Model |  | 2d | 2007-11-01 | 2007-11-02 | 8 | 0d |  | Ulli | 16h |
| 10 | 1.3.4 | Round Trip, Import XMI into EA |  | 2d | 2007-11-05 | 2007-11-06 | 9 | 79d | 0d | Ulli | 16h |
| 11 | 1.3.5 | Register Model in caDSR |  | 10d | 2007-11-07 | 2007-11-20 | 10 | 79d |  | Ulli | 80h |
| 12 | 1.4 | Milestone: Model Registered in CADSR | milestone | 0d | 2007-09-28 | 2007-09-28 |  | 58d |  |  |  |
| 13 | 1.5 | **iteration 1:** |  | 101d | 2007-10-22 | 2008-03-10 |  | 0d |  |  | 1472h |
| 14 | 1.5.1 | **EVSTree Application-side work** |  | 33d | 2007-11-05 | 2007-12-19 |  | 0d |  | Sima | 792h |
| 15 | 1.5.1.1 | **Implementation and Testing** |  | 33d | 2007-11-05 | 2007-12-19 |  | 0d |  | Sima | 528h |
| 16 | 1.5.1.1.1 | Letting a user add and view staining methods that are not part of the vocabulary; affects old and new entries |  | 1w | 2007-11-05 | 2007-11-09 | 9 | 0d |  | Sima | 40h |
| 17 | 1.5.1.1.2 | Annoyances with EVS organ tree |  | 4w | 2007-11-12 | 2007-12-07 | 16 | 0d |  | Sima | 160h |
| 18 | 1.5.1.1.3 | Selecting search results in tree causes HTTP 404 Error |  | 3d | 2007-12-10 | 2007-12-12 | 17 | 0d |  | Sima | 24h |
| 19 | 1.5.1.1.4 | Crash - when trying to select search result page crashes |  | 1w | 2007-12-13 | 2007-12-19 | 18 | 0d |  | Sima | 40h |
| 20 | 1.5.2 | **caMOD - caELMIR Integration Tasks** |  | 25d | 2007-12-20 | 2008-01-23 |  | 0d |  |  | 200h |
| 21 | 1.5.2.1 | Implement Therapy Screen for caELMIR data |  | 2w | 2007-12-20 | 2008-01-02 | 19 | 0d |  | Sima | 80h |
| 24 | 1.5.3 | **Admin Features and Misc bugs** |  | 9d | 2008-01-24 | 2008-02-05 |  | 0d |  |  | 72h |
| 25 | 1.5.3.1 | Do not delete EnvironmentalFactor objects - instead reuse and leave in DB |  | 2d | 2008-01-24 | 2008-01-25 |  | 0d |  | Sima | 16h |
| 26 | 1.5.3.2 | Editors do not receive assignment emails |  | 1w | 2008-01-28 | 2008-02-01 | 25 | 0d |  | Sima | 40h |
| 27 | 1.5.3.3 | data conversion and html code result in funny signs in text |  | 2d | 2008-02-04 | 2008-02-05 | 26 | 0d |  | Sima | 16h |

| ID | WBS | Task | Type | Duration | Start | Finish | Predecessors | Total slack | Free slack | Resources | Work |
| --- | --- | --- | --- | --- | --- | --- | --- | --- | --- | --- | --- |
| 28 | 1.5.4 | **Testing** |  | 101d | 2007-10-22 | 2008-03-10 |  | 0d |  |  | 408h |
| 29 | 1.5.4.1 | Deploy iteration on DEV Server |  | 2d | 2008-02-06 | 2008-02-07 | 27 | 0d |  | Sima | 16h |
| 30 | 1.5.4.2 | Test on DEV tier |  | 1w | 2008-02-08 | 2008-02-14 | 29 | 0d |  | Ulli; Sima | 80h |
| 31 | 1.5.4.3 | **Transition Phase** |  | 101d | 2007-10-22 | 2008-03-10 |  | 0d |  |  | 312h |
| 32 | 1.5.4.3.1 | **QA** |  | 10d | 2007-10-22 | 2007-11-02 | 5 | 90d |  | QA | 160h |
| 33 | 1.5.4.3.1.1 | Finalize Testplan |  | 1w | 2007-10-22 | 2007-10-26 | 5 | 90d | 0d | QA | 40h |
| 34 | 1.5.4.3.1.2 | Finalize Test Cases |  | 1w | 2007-10-29 | 2007-11-02 | 33 | 90d |  | QA | 40h |
| 35 | 1.5.4.3.2 | **Deploy** |  | 17d | 2008-02-15 | 2008-03-10 |  | 0d |  |  | 152h |
| 36 | 1.5.4.3.2.1 | **QA Server Deployment** |  | 10d | 2008-02-15 | 2008-02-28 | 30 | 0d |  |  | 80h |
| 37 | 1.5.4.3.2.1.1 | QA Testing |  | 2w | 2008-02-15 | 2008-02-28 |  | 0d |  | QA | 80h |
| 38 | 1.5.4.3.2.2 | **Staging Server Deployment** |  | 5d | 2008-02-29 | 2008-03-06 | 37 | 0d |  |  | 40h |
| 39 | 1.5.4.3.2.2.1 | Staging Testing |  | 1w | 2008-02-29 | 2008-03-06 |  | 0d |  | Ulli | 40h |
| 40 | 1.5.4.3.2.3 | **Production Server Deployment** |  | 2d | 2008-03-07 | 2008-03-10 | 39 | 0d |  | Sima | 32h |
| 41 | 1.5.4.3.2.3.1 | Production Verification |  | 2d | 2008-03-07 | 2008-03-10 |  | 0d |  | Ulli | 16h |
| 42 | 1.5.4.4 | caMOD 2.4 - Closeout | milestone | 0d | 2008-03-10 | 2008-03-10 | 41 | 0d |  |  |  |
